# M365 Copilot Connector Platform - Implementation (4 connectors)

Schedule from MS Project XML, 2026-08-11 to 2027-05-28, A marks actual dates.

## Calendars

- Bank Standard: Mon-Fri 08:00-12:00, 13:00-17:00; Sat-Sun off. Exceptions (off unless hours are given): 2026-09-07, 2026-10-12, 2026-11-11, 2026-11-26, 2026-12-15 to 2027-01-08, 2027-01-18, 2027-02-15.

## Resources

| Resource |
| --- |
| Platform Lead & Architect |
| .NET Engineer (interim contractor) |
| .NET Engineer (permanent hire) |
| M365/Graph Engineer |
| DevOps/Windows Engineer |
| QA/Test Engineer |
| Ops Analysts |
| Clarizen Liaison |
| Seismic Liaison |
| Altrata Feed Owner |
| BDH/Hadoop Platform Team |
| InfoSec |
| Pen-test Team |
| DPO/Compliance |
| Network Engineer |
| DBA |
| Identity Team |
| PKI Team |
| Infrastructure Team |
| M365 Platform Team |
| Change Manager / CAB |
| Procurement |
| HR / Recruitment |
| Sponsor/Business |
| Legal |

## Schedule

| ID | WBS | Task | Type | Duration | Start | Finish | Predecessors | Resources |
| --- | --- | --- | --- | --- | --- | --- | --- | --- |
| 1 | 1 | **PHASE 0 — Initiation, funding, procurement & staffing** |  |  | 2026-08-17 | 2027-03-05 |  |  |
| 2 | 1.1 | Project charter & scope approved (4 connectors) |  | 10d | 2026-08-17 | 2026-08-28 |  | Platform Lead & Architect |
| 3 | 1.2 | Architecture board briefing (diagram + operator guides) |  | 3d | 2026-08-31 | 2026-09-02 | 2 | Platform Lead & Architect |
| 4 | 1.3 | [BANK] Funding & FTE plan approved (finance committee cycle) |  | 15d | 2026-08-31 | 2026-09-21 | 2 | Sponsor/Business |
| 5 | 1.4 | [BANK] Procurement: SOW/PO for external services (contractor cover) |  | 20d | 2026-09-22 | 2026-10-20 | 4 | Procurement |
| 6 | 1.5 | [BANK] Requisition approval — Senior .NET Engineer |  | 10d | 2026-09-22 | 2026-10-05 | 4 | HR / Recruitment |
| 7 | 1.6 | [BANK] Sourcing + interviews (.NET hire) |  | 30d | 2026-10-06 | 2026-11-18 | 6 | HR / Recruitment |
| 8 | 1.7 | [BANK] Offer accepted + notice period served |  | 45d | 2026-11-19 | 2027-02-19 | 7 | HR / Recruitment |
| 9 | 1.8 | [BANK] New-hire onboarding + system access |  | 10d | 2027-02-22 | 2027-03-05 | 8 | HR / Recruitment |
| 10 | 1.9 | [BANK] Internal staff released: 2 Ops Analysts + QA agreed with line managers |  | 10d | 2026-09-22 | 2026-10-05 | 4 | Platform Lead & Architect |
| 11 | 1.10 | [BANK] Ops/QA access provisioning + onboarding |  | 10d | 2026-10-06 | 2026-10-20 | 10 | Ops Analysts |
| 12 | 1.11 | [BANK] Source-system liaisons + backups formally named (4 systems) |  | 10d | 2026-08-31 | 2026-09-14 | 2 | Platform Lead & Architect |
| 13 | 1.12 | [SEC] InfoSec engagement: intake form + review slot in queue |  | 10d | 2026-08-31 | 2026-09-14 | 2 | InfoSec |
| 14 | 1.13 | [SEC] DPO engaged — Altrata DPIA opened |  | 5d | 2026-09-15 | 2026-09-21 | 12 | DPO/Compliance |
| 15 | 1.14 | [CAB] CAB onboarding: change templates + calendar slots |  | 3d | 2026-08-31 | 2026-09-02 | 2 | Change Manager / CAB |
| 16 | 2 | **PHASE 1 — Foundations: tenant, infrastructure, security reviews** |  |  | 2026-08-31 | 2026-12-02 |  |  |
| 17 | 2.1 | [BANK] Dev/test M365 tenant access request (platform team queue) |  | 10d | 2026-08-31 | 2026-09-14 | 2 | M365 Platform Team |
| 18 | 2.2 | [BANK] App-registration requests approved (4 apps, platform queue) |  | 10d | 2026-09-15 | 2026-09-28 | 17 | M365 Platform Team |
| 19 | 2.3 | App registrations + admin consent executed |  | 3d | 2026-09-29 | 2026-10-01 | 18 | M365/Graph Engineer |
| 20 | 2.4 | [BANK] PKI: certificate credentials issued (CA queue) |  | 15d | 2026-10-02 | 2026-10-23 | 19 | PKI Team |
| 21 | 2.5 | Key Vault set up + secrets loaded |  | 5d | 2026-10-26 | 2026-10-30 | 20 | M365/Graph Engineer |
| 22 | 2.6 | [BANK] Dev/test Windows Server VMs (infrastructure request queue) |  | 15d | 2026-09-22 | 2026-10-13 | 4 | Infrastructure Team |
| 23 | 2.7 | [BANK] Prod VMs — active-active HA pair (infrastructure queue) |  | 15d | 2026-10-14 | 2026-11-03 | 22 | Infrastructure Team |
| 24 | 2.8 | [BANK] gMSA + service accounts (identity team queue) |  | 15d | 2026-10-14 | 2026-11-03 | 22 | Identity Team |
| 25 | 2.9 | [BANK] Firewall egress change requests submitted (4 sources + Graph) |  | 15d | 2026-09-15 | 2026-10-05 | 12 | Network Engineer |
| 26 | 2.10 | Firewall egress implemented + verified |  | 5d | 2026-10-06 | 2026-10-13 | 25 | Network Engineer |
| 27 | 2.11 | Proxy / TLS-inspection CA bundles distributed |  | 5d | 2026-10-14 | 2026-10-20 | 26 | Network Engineer |
| 28 | 2.12 | [SEC] Webhook inbound exposure review (security) |  | 10d | 2026-10-06 | 2026-10-20 | 25 | InfoSec |
| 29 | 2.13 | Webhook inbound rules implemented |  | 5d | 2026-10-21 | 2026-10-27 | 26, 28 | Network Engineer |
| 30 | 2.14 | [BANK] SQL Server instance + DBs scheduled (DBA queue) |  | 10d | 2026-10-14 | 2026-10-27 | 22 | DBA |
| 31 | 2.15 | State DBs built + backup jobs proven |  | 5d | 2026-10-28 | 2026-11-03 | 30 | DBA |
| 32 | 2.16 | [BANK] SIEM onboarding request (queue) |  | 15d | 2026-10-14 | 2026-11-03 | 22 | InfoSec |
| 33 | 2.17 | SIEM ingestion + detection rules live |  | 5d | 2026-11-04 | 2026-11-10 | 32 | InfoSec |
| 34 | 2.18 | Grafana dashboards + alert rules imported (ops/) |  | 3d | 2026-10-14 | 2026-10-16 | 22 | DevOps/Windows Engineer |
| 35 | 2.19 | CI/CD live: runners, signing, SBOM (interim contractor) |  | 10d | 2026-10-21 | 2026-11-03 | 5 | .NET Engineer (interim contractor) |
| 36 | 2.20 | [CAB] Architecture Review Board submission |  | 3d | 2026-09-03 | 2026-09-08 | 3 | Platform Lead & Architect |
| 37 | 2.21 | [CAB] ARB approval (board cycle) |  | 1d | 2026-09-30 | 2026-09-30 | 36FS+15d | Change Manager / CAB |
| 38 | 2.22 | [CAB] ARB conditions closed out |  | 5d | 2026-10-01 | 2026-10-07 | 37 | Platform Lead & Architect |
| 39 | 2.23 | [SEC] Fleet threat-model pack submitted (4 connectors) |  | 3d | 2026-10-02 | 2026-10-06 | 13, 19 | Platform Lead & Architect |
| 40 | 2.24 | [SEC] Threat-model review (security queue + review) |  | 10d | 2026-10-29 | 2026-11-12 | 39FS+15d | InfoSec |
| 41 | 2.25 | [SEC] Threat-model findings remediated |  | 10d | 2026-11-13 | 2026-11-27 | 40 | .NET Engineer (interim contractor) |
| 42 | 2.26 | [SEC] Threat-model sign-off |  | 3d | 2026-11-30 | 2026-12-02 | 41 | InfoSec |
| 43 | 2.27 | MILESTONE — Foundations complete | milestone | 0d | 2026-11-12 | 2026-11-12 | 21, 23, 24, 27, 29, 31, 33, 34, 35, 38 | Platform Lead & Architect |

Notes:
- 3: Architecture as delivered: ONE shared Connector.Chassis project (v1.18.0) referenced by all five connectors; 9 of 23 chassis modules fully shared, 67 declared per-connector divergences (see 8.5).
- 35: NOT STARTED - no release pipeline exists at the repository root today; the SBOM/signing/MSI designs sit in five per-connector workflow files GitHub never runs, and no release or tag has ever been produced.
- 36: TOGAF concerns 3-7 from the architecture assessment are still open at submission.

| ID | WBS | Task | Type | Duration | Start | Finish | Predecessors | Constraint | Resources |
| --- | --- | --- | --- | --- | --- | --- | --- | --- | --- |
| 44 | 3 | **PHASE 2A — Wave 1 pilot: Seismic** |  |  | 2026-09-15 | 2027-04-01 |  |  |  |
| 45 | 3.1 | [BANK] SEI: intake + OAuth credentials + teamsite scope (queues) |  | 10d | 2026-09-15 | 2026-09-28 | 12 |  | Seismic Liaison |
| 46 | 3.2 | [SEC] SEI: No-MNE exclusion policy signed off (compliance) |  | 10d | 2026-09-29 | 2026-10-13 | 45 |  | DPO/Compliance |
| 47 | 3.3 | [BANK] SEI: webhook secret + inbound URL agreed |  | 5d | 2026-10-28 | 2026-11-03 | 45, 29 |  | Seismic Liaison |
| 48 | 3.4 | Test env configured; validate-config --strict green |  | 2d | 2026-11-13 | 2026-11-16 | 43, 45 |  | Ops Analysts |
| 49 | 3.5 | E2E dev tenant: connection + schema + versioned crawl + webhooks |  | 10d | 2026-11-17 | 2026-12-01 | 48, 47 |  | QA/Test Engineer |
| 50 | 3.6 | ACL trimming verified (2 differently-permissioned users) |  | 5d | 2026-12-02 | 2026-12-08 | 49 |  | QA/Test Engineer |
| 51 | 3.7 | Exclusion verified — restricted item absent from index |  | 3d | 2026-12-02 | 2026-12-04 | 46, 49 |  | QA/Test Engineer |
| 52 | 3.8 | Version supersede / withdraw + incremental verified |  | 3d | 2026-12-09 | 2026-12-11 | 50 |  | QA/Test Engineer |
| 53 | 3.9 | Soak: 2 weeks in test environment |  | 10d | 2026-12-14 | 2027-01-22 | 51, 52 |  | QA/Test Engineer |
| 54 | 3.10 | [SEC] Pen test requested early (red-team diary booked at foundations) |  | 3d | 2026-10-14 | 2026-10-16 | 13, 22 |  | Pen-test Team |
| 55 | 3.11 | [SEC] Pen test execution |  | 10d | 2026-12-02 | 2027-01-11 | 54FS+15d, 49 |  | Pen-test Team |
| 56 | 3.12 | [SEC] Pen-test findings remediated |  | 10d | 2027-01-12 | 2027-01-26 | 55 |  | .NET Engineer (interim contractor) |
| 57 | 3.13 | [SEC] Pen-test retest + closure report |  | 5d | 2027-01-27 | 2027-02-02 | 56 |  | Pen-test Team |
| 58 | 3.14 | [SEC] InfoSec production sign-off — pilot |  | 5d | 2027-02-03 | 2027-02-09 | 42, 53, 57 |  | InfoSec |
| 59 | 3.15 | [CAB] CAB submission — pilot |  | 3d | 2027-02-10 | 2027-02-12 | 58 |  | Platform Lead & Architect |
| 60 | 3.16 | [CAB] CAB approval (board cycle) |  | 1d | 2027-03-02 | 2027-03-02 | 59FS+10d |  | Change Manager / CAB |
| 61 | 3.17 | [CAB] Prod change window scheduled (post-blackout) |  | 2d | 2027-03-03 | 2027-03-04 | 60 | start no earlier than 2027-01-11 | Change Manager / CAB |
| 62 | 3.18 | Prod deployment (MSI/SCCM, service, Key Vault) |  | 3d | 2027-03-05 | 2027-03-09 | 61, 23 |  | DevOps/Windows Engineer |
| 63 | 3.19 | First prod crawl + verification |  | 3d | 2027-03-10 | 2027-03-12 | 62 |  | Ops Analysts |
| 64 | 3.20 | Pilot business users validate Copilot answers |  | 10d | 2027-03-15 | 2027-03-26 | 63 |  | Sponsor/Business |
| 65 | 3.21 | Hypercare — Seismic |  | 10d | 2027-03-15 | 2027-03-26 | 63 |  | Ops Analysts |
| 66 | 3.22 | Ops handover: runbook walkthrough — Seismic |  | 3d | 2027-03-29 | 2027-03-31 | 64, 65 |  | Ops Analysts |
| 67 | 3.23 | MILESTONE — Seismic LIVE (pilot) | milestone | 0d | 2027-04-01 | 2027-04-01 | 66 |  | Platform Lead & Architect |

| ID | WBS | Task | Type | Duration | Start | Finish | Predecessors | Resources |
| --- | --- | --- | --- | --- | --- | --- | --- | --- |
| 68 | 4 | **PHASE 2B — Wave 2: Clarizen + Hadoop BDH (E2E early; prod gated on pilot)** |  |  | 2026-09-29 | 2027-04-22 |  |  |
| 69 | 4.1 | [BANK] CLZ: intake + service credentials + TDW access (queues) |  | 15d | 2026-09-29 | 2026-10-20 | 12, 45 | Clarizen Liaison |
| 70 | 4.2 | [BANK] CLZ: webhook secret + inbound URL agreed |  | 5d | 2026-10-28 | 2026-11-03 | 69, 29 | Clarizen Liaison |
| 71 | 4.3 | [BANK] CLZ: FINANCIAL_DATA_MODE decision (governance owner) |  | 5d | 2026-10-21 | 2026-10-27 | 69 | Platform Lead & Architect |
| 72 | 4.4 | CLZ: test config + E2E (TDW crawl + webhooks) |  | 10d | 2026-11-13 | 2026-11-27 | 43, 69, 70 | QA/Test Engineer |
| 73 | 4.5 | CLZ: financial governance verified in chosen mode |  | 5d | 2026-11-30 | 2026-12-04 | 71, 72 | QA/Test Engineer |
| 74 | 4.6 | [SEC] CLZ: InfoSec delta review + sign-off |  | 10d | 2026-12-07 | 2027-01-14 | 42, 73 | InfoSec |
| 75 | 4.7 | [CAB] CLZ: CAB submission |  | 3d | 2027-03-10 | 2027-03-12 | 74, 62 | Platform Lead & Architect |
| 76 | 4.8 | [CAB] CLZ: CAB approval (board cycle) |  | 1d | 2027-03-29 | 2027-03-29 | 75FS+10d | Change Manager / CAB |
| 77 | 4.9 | CLZ: prod deployment + first crawl |  | 5d | 2027-03-30 | 2027-04-05 | 76 | DevOps/Windows Engineer |
| 78 | 4.10 | CLZ: webhooks live + verified |  | 2d | 2027-04-06 | 2027-04-07 | 77 | Ops Analysts |
| 79 | 4.11 | CLZ: hypercare + ops handover |  | 10d | 2027-04-08 | 2027-04-21 | 78 | Ops Analysts |
| 80 | 4.12 | MILESTONE — Clarizen LIVE | milestone | 0d | 2027-04-22 | 2027-04-22 | 79 | Platform Lead & Architect |
| 81 | 4.13 | [BANK] BDH: intake — endpoint, read-only principal, layout (Hadoop queue) |  | 15d | 2026-09-29 | 2026-10-20 | 12, 45 | BDH/Hadoop Platform Team |
| 82 | 4.14 | [BANK] BDH: private CA bundle for WebHDFS TLS |  | 5d | 2026-10-21 | 2026-10-27 | 81, 27 | Network Engineer |
| 83 | 4.15 | [BANK] BDH: per-object filter policy workshops + sign-off |  | 10d | 2026-10-21 | 2026-11-03 | 81 | Platform Lead & Architect |
| 84 | 4.16 | BDH: Graph connection provisioned (carries Salesforce data) |  | 3d | 2026-10-21 | 2026-10-23 | 19, 81 | M365/Graph Engineer |
| 85 | 4.17 | BDH: validate-config --strict green (fail-closed guard proven) |  | 5d | 2026-11-13 | 2026-11-19 | 43, 83 | Ops Analysts |
| 86 | 4.18 | BDH: E2E — filtered crawl + watermark + oversize handling |  | 10d | 2026-11-20 | 2026-12-04 | 82, 84, 85 | QA/Test Engineer |
| 87 | 4.19 | BDH: scale rehearsal (stress harness scale 3 + volume test) |  | 5d | 2026-12-07 | 2026-12-11 | 86 | QA/Test Engineer |
| 88 | 4.20 | [SEC] BDH: InfoSec delta review + sign-off |  | 10d | 2026-12-14 | 2027-01-22 | 42, 87 | InfoSec |
| 89 | 4.21 | [CAB] BDH: CAB submission |  | 3d | 2027-03-10 | 2027-03-12 | 88, 62 | Platform Lead & Architect |
| 90 | 4.22 | [CAB] BDH: CAB approval (board cycle) |  | 1d | 2027-03-29 | 2027-03-29 | 89FS+10d | Change Manager / CAB |
| 91 | 4.23 | BDH: prod deployment + first filtered crawl |  | 5d | 2027-03-30 | 2027-04-05 | 90 | DevOps/Windows Engineer |
| 92 | 4.24 | BDH: nightly schedule aligned to upstream sync (00:30) |  | 2d | 2027-04-06 | 2027-04-07 | 91 | Ops Analysts |
| 93 | 4.25 | BDH: hypercare + ops handover |  | 10d | 2027-04-08 | 2027-04-21 | 92 | Ops Analysts |
| 94 | 4.26 | MILESTONE — Hadoop BDH LIVE (Salesforce data available) | milestone | 0d | 2027-04-22 | 2027-04-22 | 93 | Platform Lead & Architect |

| ID | WBS | Task | Type | Duration | Start | Finish | Predecessors | Resources |
| --- | --- | --- | --- | --- | --- | --- | --- | --- |
| 95 | 5 | **PHASE 2C — Wave 3: Altrata (compliance-gated)** |  |  | 2026-09-22 | 2027-04-20 |  |  |
| 96 | 5.1 | [SEC] ALT: DPIA assessment (privacy impact) |  | 25d | 2026-09-22 | 2026-10-27 | 14 | DPO/Compliance |
| 97 | 5.2 | [SEC] ALT: DPIA legal review + approval |  | 10d | 2026-10-28 | 2026-11-10 | 96 | Legal |
| 98 | 5.3 | [BANK] ALT: intake — feed delivery, manifest, SFTP credentials (queues) |  | 15d | 2026-09-29 | 2026-10-20 | 12, 45 | Altrata Feed Owner |
| 99 | 5.4 | [BANK] ALT: seat-list source, owner + refresh process agreed |  | 10d | 2026-10-21 | 2026-11-03 | 98 | Altrata Feed Owner |
| 100 | 5.5 | ALT: strict file ACLs on ledger/suppression/state dirs |  | 3d | 2026-11-04 | 2026-11-06 | 24, 98 | DevOps/Windows Engineer |
| 101 | 5.6 | ALT: test config + E2E — feed ingest + manifest validation |  | 10d | 2026-11-13 | 2026-11-27 | 43, 98, 100 | QA/Test Engineer |
| 102 | 5.7 | ALT: seat-only ACL verified (never-everyone holds) |  | 5d | 2026-11-30 | 2026-12-04 | 99, 101 | QA/Test Engineer |
| 103 | 5.8 | ALT: DSAR drill — forget-subject + suppression + ledger verify |  | 5d | 2026-12-07 | 2026-12-11 | 102 | Ops Analysts |
| 104 | 5.9 | [SEC] ALT: InfoSec + DPO production sign-off |  | 10d | 2026-12-14 | 2027-01-22 | 42, 97, 103 | InfoSec |
| 105 | 5.10 | [CAB] ALT: CAB submission |  | 3d | 2027-03-10 | 2027-03-12 | 104, 62 | Platform Lead & Architect |
| 106 | 5.11 | [CAB] ALT: CAB approval (board cycle) |  | 1d | 2027-03-29 | 2027-03-29 | 105FS+10d | Change Manager / CAB |
| 107 | 5.12 | ALT: prod deployment + first feed ingest |  | 5d | 2027-03-30 | 2027-04-05 | 106 | DevOps/Windows Engineer |
| 108 | 5.13 | ALT: DSAR intake process ratified (ops rota + DPO countersign) |  | 5d | 2026-12-14 | 2027-01-14 | 103 | Platform Lead & Architect |
| 109 | 5.14 | ALT: hypercare + ops handover |  | 10d | 2027-04-06 | 2027-04-19 | 107, 108 | Ops Analysts |
| 110 | 5.15 | MILESTONE — Altrata LIVE | milestone | 0d | 2027-04-20 | 2027-04-20 | 109 | Platform Lead & Architect |
| 111 | 6 | **PHASE 3 — Operational readiness (parallel with waves)** |  |  | 2026-11-13 | 2027-04-15 |  |  |
| 112 | 6.1 | Ops training: Common Guide + connector guides + quick-refs |  | 10d | 2026-11-13 | 2026-11-27 | 11, 43 | Ops Analysts |
| 113 | 6.2 | Runbook drills: dead-letter, breaker, guard refusal |  | 5d | 2027-04-02 | 2027-04-08 | 112, 67 | Ops Analysts |
| 114 | 6.3 | DR drill: state backup/restore exercised |  | 5d | 2027-04-02 | 2027-04-08 | 31, 67 | DBA |
| 115 | 6.4 | Alert-threshold tuning on live telemetry |  | 10d | 2027-04-02 | 2027-04-15 | 67 | Ops Analysts |
| 116 | 6.5 | On-call & escalation model ratified |  | 3d | 2026-11-30 | 2026-12-02 | 112 | Platform Lead & Architect |
| 117 | 7 | **PHASE 4 — Stabilisation, knowledge transfer & BAU** |  |  | 2027-04-02 | 2027-05-28 |  |  |
| 118 | 7.1 | [BANK] Knowledge transfer: contractor -> permanent .NET hire |  | 10d | 2027-04-02 | 2027-04-15 | 9, 67 | .NET Engineer (permanent hire) |
| 119 | 7.2 | 30-day stability review across all four connectors |  | 5d | 2027-05-14 | 2027-05-20 | 110FS+15d, 94FS+15d, 80, 67 | Platform Lead & Architect |
| 120 | 7.3 | Tenant capacity & quota review vs TENANT_GOVERNANCE.md |  | 3d | 2027-05-21 | 2027-05-25 | 119 | Platform Lead & Architect |
| 121 | 7.4 | Decision checkpoint: revisit deferred Salesforce connector |  | 2d | 2027-05-21 | 2027-05-24 | 119 | Platform Lead & Architect |
| 122 | 7.5 | Lessons learned + documentation refresh |  | 5d | 2027-05-21 | 2027-05-27 | 119 | Platform Lead & Architect |
| 123 | 7.6 | MILESTONE — Project closure; transition to BAU (4.2 FTE) | milestone | 0d | 2027-05-28 | 2027-05-28 | 118, 120, 121, 122 | Sponsor/Business |

| ID | WBS | Task | Type | Duration | Start | Finish | Complete | Resources |
| --- | --- | --- | --- | --- | --- | --- | --- | --- |
| 124 | 8 | **ENGINEERING BASELINE - shared-chassis consolidation delivered on main (pre-Phase 0)** |  |  | 2026-08-11 A | 2026-08-14 A | 100% |  |
| 125 | 8.1 | Connector.Chassis landed as a single top-level project (now v1.18.0) |  | 1d | 2026-08-11 A | 2026-08-11 A | 100% | Platform Lead & Architect |
| 126 | 8.2 | All five connectors switched to ProjectReference on the shared chassis |  | 2d | 2026-08-11 A | 2026-08-12 A | 100% | Platform Lead & Architect |
| 127 | 8.3 | Root CI: 8 workflows - five connectors, chassis, conformance, CodeQL |  | 3d | 2026-08-11 A | 2026-08-13 A | 100% | Platform Lead & Architect |
| 128 | 8.4 | Conformance gate resolves the ProjectReference and asserts the register |  | 1d | 2026-08-14 A | 2026-08-14 A | 100% | Platform Lead & Architect |
| 129 | 8.5 | Divergence register in force - 9 of 23 modules shared, 67 declared copies |  | 1d | 2026-08-14 A | 2026-08-14 A | 100% | Platform Lead & Architect |
| 130 | 8.6 | Alerting consolidated onto the chassis - 4 of the 5 connectors |  | 1d | 2026-08-14 A | 2026-08-14 A | 100% | Platform Lead & Architect |
| 131 | 8.7 | Chassis given its own test suite - 558 tests |  | 1d | 2026-08-14 A | 2026-08-14 A | 100% | Platform Lead & Architect |
| 132 | 8.8 | Environment-flag parsing unified across the fleet |  | 1d | 2026-08-14 A | 2026-08-14 A | 100% | Platform Lead & Architect |
| 133 | 8.9 | Altrata decision ledger - single-byte separator tamper now detected |  | 1d | 2026-08-14 A | 2026-08-14 A | 100% | Platform Lead & Architect |
| 134 | 8.10 | Fleet suite green on both operating systems - 5,445 tests, 0 skipped |  | 1d | 2026-08-14 A | 2026-08-14 A | 100% | QA/Test Engineer |
| 135 | 8.11 | Repository controls: branch protection on main + Dependabot security alerts |  | 1d | 2026-08-14 A | 2026-08-14 A | 100% | Platform Lead & Architect |
| 136 | 8.12 | MILESTONE - shared-chassis consolidation complete on main (e138f11) | milestone | 0d | 2026-08-14 A | 2026-08-14 A | 100% | Platform Lead & Architect |

Notes:
- 124: Delivered before mobilisation; appended so Phase 0-4 IDs and predecessors are unchanged.
- 125: One project at the repository root; chassis.yml builds and packs it (testing added 14-Aug-26 - see 8.7).
- 126: Seismic, Clarizen, Hadoop 11-Aug-26; Salesforce, Altrata 12-Aug-26. ProjectReference to one project on disk - never a package, never a copy.
- 127: Build + test on ubuntu-latest AND windows-latest, plus a non-pushed Docker build per connector. Per-connector .github/ workflows are inert - GitHub runs root workflows only.
- 128: conformance.yml self-tests, then asserts capabilities and the divergence register on every PR.
- 129: Salesforce 22, Clarizen 16, Hadoop 16, Altrata 13, Seismic 0, plus 9 renamed equivalents recorded. A ratchet: CI fails on an undeclared copy and on a register line whose copy no longer exists.
- 130: Clarizen, Hadoop and Salesforce joined Seismic. Altrata keeps its own, declared: its alert payload is an operator-facing contract SIEM routing keys on.
- 131: chassis.yml now tests as well as builds and packs, on both operating systems.
- 132: One boolean vocabulary; a mistyped value can no longer silently flip a gate.
- 134: Chassis 558, Salesforce 1,213, Seismic 1,025, Hadoop 988, Clarizen 897, Altrata 764. Identical counts on ubuntu-latest and windows-latest.
- 135: Both enabled 14-Aug-26. CodeQL analyses six solutions and reports ~2,029 open alerts, but gates nothing.
- 136: Out of scope of this milestone and still open: release pipeline at the repository root (2.19); TOGAF concerns 3-7 (2.20); 67 declared divergences to retire.
